# Carta_Gantt_FoodTruck_V2

Schedule from MS Project, 2025-08-18 to 2025-12-05, A marks actual dates.

## Calendars

- Estándar: Mon-Fri 09:00-13:00, 15:00-19:00; Sat-Sun off. Exceptions (off unless hours are given): 2025-11-15 09:00-13:00, 15:00-19:00.

## Resources

| Resource |
| --- |
| Gustavo Pezzini |
| René Veloso |
| Vicente Galvez |

## Schedule

| ID | WBS | Task | Type | Duration | Start | Finish | Predecessors | Complete | Remaining | Actual finish | Total slack | Deadline | Resources | Work | Actual work |
| --- | --- | --- | --- | --- | --- | --- | --- | --- | --- | --- | --- | --- | --- | --- | --- |
| 1 | 1 | **Proyecto Sistema FoodTruck** |  | 80.5d | 2025-08-18 A | 2025-12-05 |  | 99% | 0.93d |  | 0d |  |  | 307.3h | 291.3h |
| 2 | 1.1 | **Fase 1: Inicio y Planificación** |  | 6d | 2025-08-18 A | 2025-08-25 |  | 100% |  | 2025-08-29 |  |  |  | 14h | 14h |
| 3 | 1.1.1 | **Levantamiento de requerimientos y planificación macro** |  | 6d | 2025-08-18 A | 2025-08-25 A |  | 100% |  |  |  |  |  | 14h | 14h |
| 4 | 1.1.1.1 | Recopilar requerimientos funcionales y no funcionales |  | 2d | 2025-08-18 A | 2025-08-19 A |  | 100% |  |  |  |  | Gustavo Pezzini [25%] | 4h | 4h |
| 5 | 1.1.1.2 | Definir backlog inicial en Azure DevOps |  | 2d | 2025-08-20 A | 2025-08-21 A | 4 | 100% |  |  |  |  | René Veloso [25%] | 4h | 4h |
| 6 | 1.1.1.3 | Planificación macro del proyecto |  | 2d | 2025-08-22 A | 2025-08-25 A | 5 | 100% |  |  |  |  | René Veloso [25%] | 6h | 6h |
| 7 | 1.1.2 | Hito 1: Fin Levantamiento y Requerimientos | milestone | 0d | 2025-08-29 A | 2025-08-29 A | 6 | 100% |  |  |  |  |  |  |  |
| 8 | 1.2 | **Fase 2: Análisis y Diseño** |  | 9d | 2025-08-30 A | 2025-09-10 |  | 100% |  | 2025-09-05 |  |  |  | 24h | 24h |
| 9 | 1.2.1 | **Análisis y diseño de base de datos + Diagramas** |  | 9d | 2025-08-30 A | 2025-09-10 |  | 100% |  | 2025-09-05 |  |  |  | 24h | 24h |
| 10 | 1.2.1.1 | Análisis de entidades |  | 2d | 2025-08-30 A | 2025-09-01 A |  | 100% |  |  |  |  | René Veloso [25%] | 4h | 4h |
| 11 | 1.2.1.2 | Diseño de diagramas ER y UML |  | 4d | 2025-09-02 A | 2025-09-05 A | 10 | 100% |  |  |  |  | René Veloso [25%] | 8h | 8h |
| 12 | 1.2.1.3 | Configuración inicial de Azure SQL Server |  | 3d | 2025-08-30 A | 2025-09-03 A |  | 100% |  |  |  |  | Vicente Galvez [25%]; René Veloso [25%] | 12h | 12h |
| 13 | 1.2.2 | Hito 2: Fin Análisis y Diseño | milestone | 0d | 2025-09-04 A | 2025-09-04 A |  | 100% |  |  |  |  |  |  |  |
| 14 | 1.3 | **Fase 3: Desarrollo (Ágil)** |  | 24.5d | 2025-09-05 A | 2025-10-09 |  | 100% |  | 2025-11-22 |  | 2025-11-01 |  | 153.3h | 153.3h |
| 15 | 1.3.1 | **SPRINT 1: Infraestructura & Backend Core** |  | 24.5d | 2025-09-05 A | 2025-10-09 |  | 100% |  | 2025-10-10 |  |  |  | 47.75h | 47.75h |
| 16 | 1.3.1.1 | **Configuración de Entornos y Arquitectura Inicial** |  | 13d | 2025-09-05 A | 2025-09-23 |  | 100% |  | 2025-09-25 |  |  |  | 26h | 26h |
| 17 | 1.3.1.1.1 | Setup de entorno Django y Azure |  | 4.5d | 2025-09-05 A | 2025-09-11 A |  | 100% |  |  |  |  | Vicente Galvez [25%] | 9h | 9h |
| 18 | 1.3.1.1.2 | Desarrollo de modelos de datos |  | 6d | 2025-09-11 A | 2025-09-19 A |  | 100% |  |  |  |  | René Veloso [25%] | 12h | 12h |
| 19 | 1.3.1.1.3 | Instalación prerrequisitos, vs code, node.js |  | 1.5d | 2025-09-19 A | 2025-09-22 A |  | 100% |  |  |  |  | Gustavo Pezzini [25%] | 3h | 3h |
| 20 | 1.3.1.1.4 | Instalación vite, react, tailwindcss, dependencias |  | 1d | 2025-09-23 A | 2025-09-25 A |  | 100% |  |  |  |  | Gustavo Pezzini [25%] | 2h | 2h |
| 21 | 1.3.1.2 | Configurar vs code y extensiones |  | 0.88d | 2025-09-26 A | 2025-09-26 A |  | 100% |  |  |  |  | Gustavo Pezzini [25%] | 1.75h | 1.75h |
| 22 | 1.3.1.3 | Implementación de APIs básicas para Login usuarios |  | 5d | 2025-09-28 A | 2025-10-03 A |  | 100% |  |  |  |  | Vicente Galvez [25%] | 10h | 10h |
| 23 | 1.3.1.4 | CRUD gestión de pedidos |  | 5d | 2025-10-04 A | 2025-10-10 A |  | 100% |  |  |  |  | Vicente Galvez [25%] | 10h | 10h |
| 24 | 1.3.2 | **SPRINT 2: Frontend Core & PWA** |  | 13.6d | 2025-09-23 A | 2025-10-10 |  | 100% |  | 2025-10-21 |  |  |  | 37.4h | 37.4h |
| 25 | 1.3.2.1 | Arquitectura Frontend y Enrutamiento |  | 6d | 2025-09-23 A | 2025-09-30 A |  | 100% |  |  |  |  | Gustavo Pezzini [25%] | 12h | 12h |
| 26 | 1.3.2.2 | Desarrollo Módulo de Autenticación |  | 1.5d | 2025-10-03 A | 2025-10-06 A | 25 | 100% |  |  |  |  | Gustavo Pezzini [25%]; Vicente Galvez [25%] | 6h | 6h |
| 27 | 1.3.2.3 | Desarrollo Dashboard Vendedor y Catálogo |  | 2d | 2025-10-10 A | 2025-10-13 A | 26 | 100% |  |  |  |  | Gustavo Pezzini [25%]; Vicente Galvez [25%] | 8h | 8h |
| 28 | 1.3.2.4 | Desarrollo Módulo Toma de Pedidos |  | 1.85d | 2025-10-09 A | 2025-10-10 A | 27 | 100% |  |  |  |  | Gustavo Pezzini [25%]; Vicente Galvez [25%] | 7.4h | 7.4h |
| 29 | 1.3.2.5 | Pruebas validaciones |  | 16h | 2025-10-20 A | 2025-10-21 A | 28 | 100% |  |  |  |  | René Veloso [25%] | 4h | 4h |

| ID | WBS | Task | Type | Duration | Start | Finish | Predecessors | Complete | Remaining | Actual finish | Total slack | Constraint | Resources | Work | Actual work |
| --- | --- | --- | --- | --- | --- | --- | --- | --- | --- | --- | --- | --- | --- | --- | --- |
| 30 | 1.3.3 | **SPRINT 3: Integración & Sincronización** |  | 18.7d | 2025-10-24 A | 2025-11-18 A |  | 100% |  |  |  |  |  | 49.15h | 49.15h |
| 31 | 1.3.3.1 | Setup de PWA manifest |  | 1d | 2025-10-24 A | 2025-10-24 A |  | 100% |  |  |  |  | Gustavo Pezzini [25%] | 2h | 2h |
| 32 | 1.3.3.2 | Implementación de modo offline |  | 2d | 2025-10-27 A | 2025-10-28 A | 31 | 100% |  |  |  |  | Gustavo Pezzini [25%] | 4h | 4h |
| 33 | 1.3.3.3 | Integración frontend-backend vía APIs |  | 2.69d | 2025-10-29 A | 2025-10-31 A | 32 | 100% |  |  |  |  | Gustavo Pezzini [25%]; Vicente Galvez [25%] | 10.75h | 10.75h |
| 34 | 1.3.3.4 | Desarrollo de sincronización offline-online |  | 4d | 2025-11-01 A | 2025-11-06 A | 33 | 100% |  |  |  |  | Gustavo Pezzini [25%] | 8h | 8h |
| 35 | 1.3.3.5 | Integración con POS simulado |  | 5d | 2025-11-07 A | 2025-11-13 A | 34 | 100% |  |  |  |  | Gustavo Pezzini [25%]; Vicente Galvez [25%] | 10h | 10h |
| 36 | 1.3.3.6 | Manejo de roles multiusuario |  | 2.7d | 2025-11-14 A | 2025-11-18 A | 35 | 100% |  |  |  |  | Gustavo Pezzini [33%]; Vicente Galvez [33%] | 14.4h | 14.4h |
| 37 | 1.3.3.7 | Pruebas y validaciones | milestone | 0d | 2025-11-17 A | 2025-11-17 A |  | 100% |  |  |  |  | René Veloso |  |  |
| 38 | 1.3.4 | **SPRINT 4: Funcionalidades Avanzadas & Optimización** |  | 5d | 2025-11-18 A | 2025-11-24 |  | 100% |  | 2025-11-22 |  |  |  | 19h | 19h |
| 39 | 1.3.4.1 | Implementación de reportes financieros y historial |  | 0.5d | 2025-11-18 A | 2025-11-18 A |  | 100% |  |  |  |  | Gustavo Pezzini; Vicente Galvez | 8h | 8h |
| 40 | 1.3.4.2 | Funcionalidad Apertura y Cierre de Caja |  | 0.25d | 2025-11-20 A | 2025-11-20 A |  | 100% |  |  |  |  | Gustavo Pezzini; Vicente Galvez | 4h | 4h |
| 41 | 1.3.4.3 | Funcionalidades multisucursal |  | 0.5d | 2025-11-21 A | 2025-11-21 A |  | 100% |  |  |  |  | Vicente Galvez; Gustavo Pezzini | 4h | 4h |
| 42 | 1.3.4.4 | Pruebas y validaciones | manual | 3h | 2025-11-22 A | 2025-11-22 A |  | 100% |  |  |  |  | René Veloso | 3h | 3h |
| 43 | 1.3.4.5 | Hito 3: Fin Desarrollo | milestone | 0d | 2025-11-22 A | 2025-11-22 A |  | 100% |  |  |  |  |  |  |  |
| 44 | 1.4 | **Fase 4: Pruebas y Validaciones** |  | 2d | 2025-11-20 A | 2025-11-21 A |  | 100% |  |  |  |  |  | 12h | 12h |
| 45 | 1.4.1 | **UAT y Despliegue** |  | 2d | 2025-11-20 A | 2025-11-21 A |  | 100% |  |  |  |  |  | 12h | 12h |
| 46 | 1.4.1.1 | Pruebas de Aceptación (UAT) |  | 2d | 2025-11-20 A | 2025-11-21 A |  | 100% |  |  |  |  | René Veloso [25%] | 4h | 4h |
| 47 | 1.4.1.2 | Despliegue en Azure App Service y Static Web Apps |  | 1d | 2025-11-21 A | 2025-11-21 A |  | 100% |  |  |  | start no earlier than 2025-11-21 | Vicente Galvez | 8h | 8h |
| 48 | 1.4.2 | Hito 4: Fin Pruebas | milestone | 0d | 2025-11-21 A | 2025-11-21 A | 47 | 100% |  |  |  |  |  |  |  |
| 49 | 1.5 | **Fase 5: Cierre** |  | 15.5d | 2025-11-15 A | 2025-12-05 |  | 92% | 1.29d |  | 0d |  |  | 104h | 88h |
| 50 | 1.5.1 | **Documentación Final** |  | 10.9d | 2025-11-15 A | 2025-11-28 |  | 96% | 0.47d |  | 0d |  |  | 92h | 88h |
| 51 | 1.5.1.1 | Informe de proyecto |  | 10d | 2025-11-15 A | 2025-11-27 A |  | 100% |  |  |  | start no earlier than 2025-11-15 | René Veloso | 80h | 80h |
| 52 | 1.5.1.2 | Preparación video de demo funcional | manual | 0.5d | 2025-11-25 | 2025-11-25 |  |  |  |  |  |  | Gustavo Pezzini | 4h |  |
| 53 | 1.5.1.3 | Presentación |  | 1d | 2025-11-26 A | 2025-11-28 A | 51 | 100% |  |  |  |  | René Veloso | 8h | 8h |

| ID | WBS | Task | Type | Duration | Start | Finish | Total slack | Constraint | Resources | Work |
| --- | --- | --- | --- | --- | --- | --- | --- | --- | --- | --- |
| 54 | 1.5.2 | **Entrega y Presentación** |  | 1.5d | 2025-12-03 | 2025-12-04 |  |  |  | 12h |
| 55 | 1.5.2.1 | Presentación ante comisión |  | 0.5d | 2025-12-05 | 2025-12-05 | 0d | start no earlier than 2025-12-05 | Gustavo Pezzini; René Veloso; Vicente Galvez | 12h |
| 56 | 1.6 | Hito 5: Fin Cierre | milestone | 0d | 2025-12-05 | 2025-12-05 | 0.5d | start no earlier than 2025-12-05 |  |  |
